# FMPS Demo

Schedule from a web Gantt chart, 2025-10-27 to 2026-01-27.
Saturdays and Sundays are off

## Schedule

| ID | WBS | Task | Type | Duration | Start | Finish | Predecessors | Status |
| --- | --- | --- | --- | --- | --- | --- | --- | --- |
| 2 | 1 | Architect Design |  | 12d | 2025-10-27 | 2025-11-11 |  |  |
| 3 | 2 | Hardware architect design |  | 7d | 2025-11-06 | 2025-11-14 |  |  |
| 4 | 3 | Power Unit Evaluate |  | 1d | 2025-10-27 | 2025-10-27 |  |  |
| 5 | 4 | Demo Show | fixed start | 2d | 2026-01-26 | 2026-01-27 |  |  |
| 6 | 5 | **Electric Design** |  | 35d | 2025-11-17 | 2026-01-02 | 3 | waiting |
| 7 | 5.1 | Schematic Design |  | 15d | 2025-11-17 | 2025-12-05 |  | waiting |
| 8 | 5.2 | Material Prepare |  | 25d | 2025-11-17 | 2025-12-19 |  | waiting |
| 9 | 5.3 | Layout |  | 5d | 2025-12-08 | 2025-12-12 | 7 | waiting |
| 10 | 5.4 | PCBA Build |  | 15d | 2025-12-15 | 2026-01-02 | 9 | waiting |
| 11 | 6 | **Mechanical Design** |  | 35d | 2025-11-17 | 2026-01-02 | 3 | waiting |
| 12 | 6.1 | ID |  | 10d | 2025-11-17 | 2025-11-28 |  | waiting |
| 13 | 6.2 | 3D Draw |  | 15d | 2025-12-01 | 2025-12-19 | 12 | waiting |
| 14 | 6.3 | 3D Print Prototype |  | 10d | 2025-12-22 | 2026-01-02 | 13 | waiting |
| 15 | 7 | **Firmware Design** |  | 53d | 2025-11-12 | 2026-01-23 | 2 | waiting |
| 16 | 7.1 | **FSK Generate & Sample Verification** |  | 20d | 2025-11-12 | 2025-12-09 |  | waiting |
| 17 | 7.1.1 | FSK generate & cop to power line |  | 10d | 2025-11-12 | 2025-11-25 |  | waiting |
| 18 | 7.1.2 | FSK signal sampling |  | 10d | 2025-11-26 | 2025-12-09 | 17 | waiting |
| 19 | 7.2 | RCD Protect |  | 5d | 2025-12-10 | 2025-12-16 | 16 | waiting |
| 20 | 7.3 | Fault Detection |  | 15d | 2025-12-17 | 2026-01-06 | 19 | waiting |
| 21 | 7.4 | Integration Develop & Test |  | 13d | 2026-01-07 | 2026-01-23 | 20 | waiting |
| 22 | 8 | **PLC Driver evaluate Ti AFE032** |  | 20d | 2025-11-10 | 2025-12-05 |  |  |
| 23 | 8.1 | Material purchuse |  | 8d | 2025-11-10 | 2025-11-19 |  |  |
| 24 | 8.2 | JLC PCB&PCBA Sample |  | 10d | 2025-11-13 | 2025-11-26 |  | waiting |
| 25 | 8.3 | Signal generate & sample |  | 7d | 2025-11-27 | 2025-12-05 | 24 | waiting |
